# Project Scheduling

Schedule from MS Project, 2022-05-09 to 2022-09-30, costs in €.
BIER
Mário Sousa 20201572 / Francisco Sousa 20201569 / David Fortunado 2020 / Maria Sofia 20201557 / Mateus Costa 20201604

## Calendars

- Standard: Mon-Fri 08:00-12:00, 13:00-17:00; Sat-Sun off.

## Resources

| Resource | Group | Rate | Cost per use |
| --- | --- | --- | --- |
| Project Sponsor B | BIER |  |  |
| HR Specialist | BIER |  |  |
| Project Manager B | BIER |  |  |
| IT Coordinator | BIER |  |  |
| Junior Coordinator | BIER |  |  |
| Infrastructure Specialist | BIER |  |  |
| Product Owner | BIER |  |  |
| Internal Auditor 1 | BIER |  |  |
| Internal Auditor 2 | BIER |  |  |
| Internal Auditor 3 | BIER |  |  |
| Internal Auditor 4 | BIER |  |  |
| Internal Auditor 5 | BIER |  |  |
| Project Sponsor N | NOVA iSolutions |  |  |
| Project Manager N | NOVA iSolutions | 56.25 | 450 |
| SCRUM Master | NOVA iSolutions | 50 | 400 |
| SCRUM T Consultant 1 | NOVA iSolutions | 31.25 | 125 |
| SCRUM T Consultant 2 | NOVA iSolutions | 31.25 | 125 |
| Senior Internal Audit Consultant | NOVA iSolutions | 62.5 | 500 |
| SIAC Consultant 1 | NOVA iSolutions | 37.5 | 150 |
| SIAC Consultant 2 | NOVA iSolutions | 37.5 | 150 |

## Schedule

| ID | WBS | Task | Type | Duration | Start | Finish | Predecessors | Total slack | Constraint | Resources | Work | Cost |
| --- | --- | --- | --- | --- | --- | --- | --- | --- | --- | --- | --- | --- |
| 1 | 1 | **Project Managemnt** |  | 105d | 2022-05-09 | 2022-09-30 |  | 0d |  |  | 464h | 5,000 |
| 2 | 1.1 | **Project Initiation** |  | 3d | 2022-05-09 | 2022-05-11 |  | 0d |  |  | 56h | 375 |
| 3 | 1.1.1 | Review Project Charter |  | 1d | 2022-05-09 | 2022-05-09 |  | 0d |  | Project Manager B; Project Sponsor B | 16h |  |
| 4 | 1.1.2 | Review Stakeholders Identification |  | 1d | 2022-05-10 | 2022-05-10 | 3 | 0d |  | Project Manager B; Project Sponsor B | 16h |  |
| 5 | 1.1.3 | Establish Project Team |  | 1d | 2022-05-11 | 2022-05-11 | 4 | 0d |  | Project Manager B; Project Sponsor B; SCRUM T Consultant 1 | 24h | 375 |
| 6 | 1.1.4 | Project Started | milestone | 0d | 2022-05-11 | 2022-05-11 | 5 | 0d |  |  |  |  |
| 7 | 1.2 | **Project Planning** |  | 5d | 2022-05-12 | 2022-05-18 |  | 0d |  |  | 144h | 3,075 |
| 8 | 1.2.1 | Review Project Scope and Time |  | 1d | 2022-05-12 | 2022-05-12 | 6 | 0d |  | Project Manager B; Project Sponsor B | 16h |  |
| 9 | 1.2.2 | Review Project plan |  | 1d | 2022-05-13 | 2022-05-13 | 8 | 0d |  | Project Manager B; Project Sponsor B | 16h |  |
| 10 | 1.2.3 | Review Risks |  | 1d | 2022-05-16 | 2022-05-16 | 9 | 0d |  | Project Manager B; Project Sponsor B | 16h |  |
| 11 | 1.2.4 | Create project plan |  | 1d | 2022-05-17 | 2022-05-17 | 10 | 0d |  | Project Manager B; Project Sponsor B; SCRUM T Consultant 1 | 24h | 375 |
| 12 | 1.2.5 | Kick-off meeting |  | 1d | 2022-05-18 | 2022-05-18 | 11 | 0d |  | Infrastructure Specialist; IT Coordinator; Product Owner; Project Manager B; Project Manager N; Project Sponsor B; Project Sponsor N; SCRUM Master; Senior Internal Audit Consultant | 72h | 2,700 |
| 13 | 1.2.6 | Approved Project Plan | milestone | 0d | 2022-05-18 | 2022-05-18 | 12 | 0d |  |  |  |  |
| 14 | 1.3 | **Control** |  | 41d | 2022-05-20 | 2022-07-15 |  | 55d |  |  | 120h |  |
| 15 | 1.3.1 | Control 1 |  | 1d | 2022-05-20 | 2022-05-20 |  | 95d | start no earlier than 2022-05-20 | Project Sponsor B [50%]; Project Manager B [50%] | 8h |  |
| 16 | 1.3.2 | Control 2 |  | 1d | 2022-05-27 | 2022-05-27 |  | 90d | start no earlier than 2022-05-27 | Project Sponsor B [50%]; Project Manager B [50%] | 8h |  |
| 17 | 1.3.3 | Control 3 |  | 1d | 2022-06-03 | 2022-06-03 |  | 85d | start no earlier than 2022-06-03 | Project Sponsor B; Project Manager B | 16h |  |
| 18 | 1.3.4 | Control 4 |  | 1d | 2022-06-10 | 2022-06-10 |  | 80d | start no earlier than 2022-06-10 | Project Sponsor B [50%]; Project Manager B [50%] | 8h |  |
| 19 | 1.3.5 | Control 5 |  | 1d | 2022-06-17 | 2022-06-17 |  | 75d | start no earlier than 2022-06-17 | Project Sponsor B; Project Manager B | 16h |  |
| 20 | 1.3.6 | Control 6 |  | 1d | 2022-06-24 | 2022-06-24 |  | 70d | start no earlier than 2022-06-24 | Project Sponsor B; Project Manager B | 16h |  |
| 21 | 1.3.7 | Control 7 |  | 1d | 2022-07-01 | 2022-07-01 |  | 65d | start no earlier than 2022-07-01 | Project Sponsor B; Project Manager B | 16h |  |
| 22 | 1.3.8 | Control 8 |  | 1d | 2022-07-08 | 2022-07-08 |  | 60d | start no earlier than 2022-07-08 | Project Sponsor B; Project Manager B | 16h |  |
| 23 | 1.3.9 | Control 9 |  | 1d | 2022-07-15 | 2022-07-15 |  | 55d | start no earlier than 2022-07-15 | Project Sponsor B; Project Manager B | 16h |  |
| 24 | 1.4 | **Project Closure** |  | 5d | 2022-09-26 | 2022-09-30 |  | 0d |  |  | 144h | 1,550 |
| 25 | 1.4.1 | Review project objectives |  | 2d | 2022-09-26 | 2022-09-27 | 117 | 0d |  | Project Manager B; Project Sponsor B; Project Sponsor N | 48h |  |
| 26 | 1.4.2 | Collect Lessons Learned |  | 1d | 2022-09-28 | 2022-09-28 | 25 | 0d |  | Project Manager B; Project Sponsor B; Project Sponsor N | 24h |  |
| 27 | 1.4.3 | Provide Feedback |  | 1d | 2022-09-29 | 2022-09-29 | 26 | 0d |  | Project Manager B; Project Sponsor B; Project Sponsor N | 24h |  |
| 28 | 1.4.4 | Close contracts |  | 1d | 2022-09-30 | 2022-09-30 | 27 | 0d |  | Project Manager B; Project Sponsor B; Project Sponsor N; SCRUM Master; SCRUM T Consultant 1; SCRUM T Consultant 2 | 48h | 1,550 |
| 29 | 1.4.5 | Tested Quality and Insurance | milestone | 0d | 2022-09-30 | 2022-09-30 | 28 | 0d |  |  |  |  |

| ID | WBS | Task | Type | Duration | Start | Finish | Predecessors | Total slack | Free slack | Resources | Work | Cost |
| --- | --- | --- | --- | --- | --- | --- | --- | --- | --- | --- | --- | --- |
| 30 | 2 | **Definition** |  | 10d | 2022-05-19 | 2022-06-01 |  | 0d |  |  | 252h | 6,250 |
| 31 | 2.1 | **Current System (As Is)** |  | 5d | 2022-05-19 | 2022-05-25 |  | 0d |  |  | 124h | 2,850 |
| 32 | 2.1.1 | Describe internal audit processes, roles, and documentation |  | 3d | 2022-05-19 | 2022-05-23 | 13 | 0d |  | Product Owner; Project Manager B [50%]; SCRUM T Consultant 2 | 60h | 875 |
| 33 | 2.1.2 | Create internal audit process document |  | 2d | 2022-05-24 | 2022-05-25 | 32 | 0d |  | Product Owner; Project Manager B; Project Manager N; SCRUM T Consultant 2 | 64h | 1,975 |
| 34 | 2.1.3 | Requirements' overview | milestone | 0d | 2022-05-25 | 2022-05-25 | 33 | 0d |  |  |  |  |
| 35 | 2.2 | **Requirement Specification (To Be)** |  | 5d | 2022-05-26 | 2022-06-01 |  | 0d |  |  | 128h | 3,400 |
| 36 | 2.2.1 | Identifies IAM requirements |  | 2d | 2022-05-26 | 2022-05-27 | 34 | 0d |  | Project Sponsor B [50%] | 8h |  |
| 37 | 2.2.2 | Create requirements‘ specification document |  | 3d | 2022-05-30 | 2022-06-01 | 36 | 0d |  | Product Owner; Project Manager B; Project Sponsor B; Project Manager N; SCRUM Master | 120h | 3,400 |
| 38 | 2.2.3 | Requirements’ Specification Approved | milestone | 0d | 2022-06-01 | 2022-06-01 | 37 | 0d |  |  |  |  |
| 39 | 3 | **Design** |  | 13d | 2022-06-02 | 2022-06-20 |  | 0d |  |  | 208h | 11,750 |
| 40 | 3.1 | **Gap analysis** |  | 5d | 2022-06-02 | 2022-06-08 |  | 0d |  |  | 64h | 4,550 |
| 41 | 3.1.1 | Identification of the functionalities |  | 3d | 2022-06-02 | 2022-06-06 | 38 | 0d |  | Project Manager N; Senior Internal Audit Consultant | 48h | 3,800 |
| 42 | 3.1.2 | Design of the functionalities |  | 2d | 2022-06-07 | 2022-06-08 | 41 | 0d |  | SIAC Consultant 1 | 16h | 750 |
| 43 | 3.1.3 | Gap Analysis Document Approved | milestone | 0d | 2022-06-08 | 2022-06-08 | 42 | 0d |  |  |  |  |
| 44 | 3.2 | **Migration Design** |  | 5d | 2022-06-09 | 2022-06-15 |  | 77d |  |  | 64h | 4,550 |
| 45 | 3.2.1 | Design the migration technology |  | 3d | 2022-06-09 | 2022-06-13 | 43 | 77d | 0d | Project Manager N; Senior Internal Audit Consultant | 48h | 3,800 |
| 46 | 3.2.2 | Design the migration processes |  | 2d | 2022-06-14 | 2022-06-15 | 45 | 77d | 0d | SIAC Consultant 1 | 16h | 750 |
| 47 | 3.2.3 | Data Quality | milestone | 0d | 2022-06-15 | 2022-06-15 | 46 | 77d |  |  |  |  |
| 48 | 3.3 | **HR Integration Design** |  | 5d | 2022-06-09 | 2022-06-15 |  | 0d |  |  | 48h |  |
| 49 | 3.3.1 | Design API planning |  | 2d | 2022-06-09 | 2022-06-10 | 43 | 0d |  | IT Coordinator; Project Manager B [50%] | 24h |  |
| 50 | 3.3.2 | API design integration |  | 3d | 2022-06-13 | 2022-06-15 | 49 | 0d |  | Junior Coordinator | 24h |  |
| 51 | 3.3.3 | Approved by HR representant and IT Coordinator | milestone | 0d | 2022-06-15 | 2022-06-15 | 50 | 0d |  |  |  |  |
| 52 | 3.4 | **Tests Specification** |  | 3d | 2022-06-16 | 2022-06-20 |  | 0d |  |  | 32h | 2,650 |
| 53 | 3.4.1 | Integration, system, and acceptance tests specification |  | 2d | 2022-06-16 | 2022-06-17 | 51 | 0d |  | SIAC Consultant 1 | 16h | 750 |
| 54 | 3.4.2 | Creates the specification tests document |  | 1d | 2022-06-20 | 2022-06-20 | 53 | 0d |  | Project Manager N; Senior Internal Audit Consultant | 16h | 1,900 |
| 55 | 3.4.3 | Approved by Product Owner | milestone | 0d | 2022-06-20 | 2022-06-20 | 54 | 0d |  |  |  |  |

| ID | WBS | Task | Type | Duration | Start | Finish | Predecessors | Total slack | Free slack | Resources | Work | Cost |
| --- | --- | --- | --- | --- | --- | --- | --- | --- | --- | --- | --- | --- |
| 56 | 4 | **Realization** |  | 42d | 2022-06-16 | 2022-08-12 |  | 0d |  |  | 684h | 29,425 |
| 57 | 4.1 | **IA Configuration** |  | 20d | 2022-06-16 | 2022-07-13 |  | 12d |  |  | 120h | 6,525 |
| 58 | 4.1.1 | Internal audit solution configuration |  | 3w | 2022-06-16 | 2022-07-06 | 51 | 12d | 0d | SIAC Consultant 2 [50%] | 60h | 2,325 |
| 59 | 4.1.2 | Configuration errors correction |  | 1w | 2022-07-07 | 2022-07-13 | 58 | 12d | 0d | Project Manager N; Senior Internal Audit Consultant [50%] | 60h | 4,200 |
| 60 | 4.1.3 | Configuration Conclusion | milestone | 0d | 2022-07-13 | 2022-07-13 | 59 | 12d | 0d |  |  |  |
| 61 | 4.2 | **Findings´ migration** |  | 5d | 2022-07-14 | 2022-07-20 |  | 17d |  |  | 48h | 3,250 |
| 62 | 4.2.1 | Create migration scripts |  | 4d | 2022-07-14 | 2022-07-19 | 60 | 17d | 0d | SIAC Consultant 2 | 32h | 1,350 |
| 63 | 4.2.2 | Test with data samples |  | 1d | 2022-07-20 | 2022-07-20 | 62 | 17d | 0d | Project Manager N; Senior Internal Audit Consultant | 16h | 1,900 |
| 64 | 4.2.3 | Software to ensure the data quality migration | milestone | 0d | 2022-07-20 | 2022-07-20 | 63 | 17d |  |  |  |  |
| 65 | 4.3 | **HR integration** |  | 10d | 2022-07-14 | 2022-07-27 |  | 12d |  |  | 120h |  |
| 66 | 4.3.1 | Create the API integration |  | 1w | 2022-07-14 | 2022-07-20 | 60 | 12d | 0d | Junior Coordinator | 40h |  |
| 67 | 4.3.2 | Execute unit tests |  | 1w | 2022-07-21 | 2022-07-27 | 66 | 12d | 0d | IT Coordinator; Project Manager B | 80h |  |
| 68 | 4.3.3 | Integrated API | milestone | 0d | 2022-07-27 | 2022-07-27 | 67 | 12d |  |  |  |  |
| 69 | 4.4 | **Reports & Dashboards module** |  | 35d | 2022-06-21 | 2022-08-08 |  | 0d |  |  | 292h | 15,050 |
| 70 | 4.4.1 | **Backlog Defenition** |  | 5d | 2022-06-21 | 2022-06-27 |  | 0d |  |  | 72h | 3,900 |
| 71 | 4.4.1.1 | Create the requirements list |  | 3d | 2022-06-21 | 2022-06-23 | 55 | 0d |  | SIAC Consultant 1 | 24h | 1,050 |
| 72 | 4.4.1.2 | Requirements list document |  | 2d | 2022-06-24 | 2022-06-27 | 71 | 0d |  | Product Owner; Project Manager N; Senior Internal Audit Consultant | 48h | 2,850 |
| 73 | 4.4.1.3 | Backlog Approval | milestone | 0d | 2022-06-27 | 2022-06-27 | 72 | 0d |  |  |  |  |
| 74 | 4.4.2 | **Sprint 1** |  | 10d | 2022-06-28 | 2022-07-11 |  | 0d |  |  | 76h | 4,050 |
| 75 | 4.4.2.1 | Plan |  | 1d | 2022-06-28 | 2022-06-28 | 73 | 0d |  | Senior Internal Audit Consultant | 8h | 1,000 |
| 76 | 4.4.2.2 | Execution |  | 8d | 2022-06-29 | 2022-07-08 | 75 | 0d |  | SIAC Consultant 1 | 64h | 2,550 |
| 77 | 4.4.2.3 | Review |  | 1d | 2022-07-11 | 2022-07-11 | 76 | 0d |  | Senior Internal Audit Consultant [50%] | 4h | 500 |
| 78 | 4.4.3 | **Sprint 2** |  | 10d | 2022-07-12 | 2022-07-25 |  | 0d |  |  | 72h | 3,550 |
| 79 | 4.4.3.1 | Plan |  | 1d | 2022-07-12 | 2022-07-12 | 77 | 0d |  | Senior Internal Audit Consultant [50%] | 4h | 500 |
| 80 | 4.4.3.2 | Execution |  | 8d | 2022-07-13 | 2022-07-22 | 79 | 0d |  | SIAC Consultant 1 | 64h | 2,550 |
| 81 | 4.4.3.3 | Review |  | 1d | 2022-07-25 | 2022-07-25 | 80 | 0d |  | Senior Internal Audit Consultant [50%] | 4h | 500 |

| ID | WBS | Task | Type | Duration | Start | Finish | Predecessors | Total slack | Free slack | Resources | Work | Cost |
| --- | --- | --- | --- | --- | --- | --- | --- | --- | --- | --- | --- | --- |
| 82 | 4.4.4 | **Sprint 3** |  | 10d | 2022-07-26 | 2022-08-08 |  | 0d |  |  | 72h | 3,550 |
| 83 | 4.4.4.1 | Plan |  | 1d | 2022-07-26 | 2022-07-26 | 81 | 0d |  | Senior Internal Audit Consultant [50%] | 4h | 500 |
| 84 | 4.4.4.2 | Execution |  | 8d | 2022-07-27 | 2022-08-05 | 83 | 0d |  | SIAC Consultant 1 | 64h | 2,550 |
| 85 | 4.4.4.3 | Review |  | 1d | 2022-08-08 | 2022-08-08 | 84 | 0d |  | Senior Internal Audit Consultant [50%] | 4h | 500 |
| 86 | 4.5 | **Integration Tests** |  | 4d | 2022-08-09 | 2022-08-12 |  | 0d |  |  | 104h | 4,600 |
| 87 | 4.5.1 | Test |  | 4d | 2022-08-09 | 2022-08-12 | 85 | 0d |  | SIAC Consultant 1; SCRUM T Consultant 1; SCRUM T Consultant 2 | 96h | 3,600 |
| 88 | 4.5.2 | Fix non conformities |  | 1d | 2022-08-09 | 2022-08-09 | 87SS | 3d | 0d | Senior Internal Audit Consultant | 8h | 1,000 |
| 89 | 4.5.3 | Integration tests concluded | milestone | 0d | 2022-08-09 | 2022-08-09 | 88 | 3d | 0d |  |  |  |
| 90 | 5 | **Transition** |  | 43d | 2022-06-21 | 2022-08-18 |  | 31d |  |  | 125.6h | 7,460 |
| 91 | 5.1 | **IA Installation** |  | 43d | 2022-06-21 | 2022-08-18 |  | 31d |  |  | 40h | 1,875 |
| 92 | 5.1.1 | Development |  | 2d | 2022-06-21 | 2022-06-22 | 55 | 72d |  | SIAC Consultant 2 [50%] | 8h | 375 |
| 93 | 5.1.2 | Quality |  | 2d | 2022-08-10 | 2022-08-11 | 89 | 31d | 0d | Project Manager B | 16h |  |
| 94 | 5.1.3 | Production |  | 2d | 2022-08-17 | 2022-08-18 | 108 | 31d | 0d | Senior Internal Audit Consultant | 16h | 1,500 |
| 95 | 5.1.4 | Completed IA installation | milestone | 0d | 2022-08-18 | 2022-08-18 | 94 | 31d |  |  |  |  |
| 96 | 5.2 | **Training** |  | 5d | 2022-08-12 | 2022-08-18 |  | 31d |  |  | 32h | 2,675 |
| 97 | 5.2.1 | Prepare training materials |  | 3d | 2022-08-12 | 2022-08-16 | 93 | 31d | 0d | Senior Internal Audit Consultant | 24h | 2,000 |
| 98 | 5.2.2 | Deliver K-users training |  | 2d | 2022-08-17 | 2022-08-18 | 97 | 31d | 0d | Project Manager N [50%] | 8h | 675 |
| 99 | 5.2.3 | Preparation for Training | milestone | 0d | 2022-08-18 | 2022-08-18 | 98 | 31d |  |  |  |  |
| 100 | 5.3 | **System Tests** |  | 5d | 2022-08-12 | 2022-08-18 |  | 31d |  |  | 41.6h | 2,010 |
| 101 | 5.3.1 | Run Security |  | 4d | 2022-08-12 | 2022-08-17 | 93 | 31d | 0d | SIAC Consultant 2 [60%] | 19.2h | 810 |
| 102 | 5.3.2 | Performance tests |  | 1d | 2022-08-18 | 2022-08-18 | 101 | 31d | 0d | Project Manager N [50%] | 4h | 450 |
| 103 | 5.3.3 | Testing | milestone | 0d | 2022-08-18 | 2022-08-18 | 102 | 31d |  |  |  |  |
| 104 | 5.3.4 | **Acceptance Tests** |  | 3d | 2022-08-12 | 2022-08-16 |  | 31d |  |  | 18.4h | 750 |
| 105 | 5.3.4.1 | Run acceptance tests |  | 2d | 2022-08-12 | 2022-08-15 | 93 | 31d | 0d | SIAC Consultant 2 [20%] | 3.2h | 150 |
| 106 | 5.3.4.2 | Fix non-conformities |  | 2d | 2022-08-12 | 2022-08-15 | 105SS | 31d | 0d | SIAC Consultant 2 [20%] | 3.2h | 150 |
| 107 | 5.3.4.3 | Requires project sponsor approval |  | 1d | 2022-08-16 | 2022-08-16 | 106 | 31d | 0d | Project Manager N [50%]; Project Sponsor B | 12h | 450 |
| 108 | 5.3.4.4 | User acceptance testing | milestone | 0d | 2022-08-16 | 2022-08-16 | 107 | 31d | 0d |  |  |  |

| ID | WBS | Task | Type | Duration | Start | Finish | Predecessors | Total slack | Resources | Work | Cost |
| --- | --- | --- | --- | --- | --- | --- | --- | --- | --- | --- | --- |
| 109 | 5.4 | **Data migration** |  | 2d | 2022-08-15 | 2022-08-16 |  | 0d |  | 12h | 900 |
| 110 | 5.4.1 | Migrate data for acceptance tests |  | 1d | 2022-08-15 | 2022-08-15 | 56 | 0d | SIAC Consultant 1 | 8h | 450 |
| 111 | 5.4.2 | Migrate final data for pilot |  | 1d | 2022-08-16 | 2022-08-16 | 110 | 0d | Project Manager N [50%] | 4h | 450 |
| 112 | 5.4.3 | Data Migrated | milestone | 0d | 2022-08-16 | 2022-08-16 | 111 | 0d |  |  |  |
| 113 | 6 | **Operation** |  | 28d | 2022-08-17 | 2022-09-23 |  | 0d |  | 784h | 20,750 |
| 114 | 6.1 | **Pilot** |  | 28d | 2022-08-17 | 2022-09-23 |  | 0d |  | 784h | 20,750 |
| 115 | 6.1.1 | Plan, execute and revise the results |  | 14d | 2022-08-17 | 2022-09-05 | 112 | 0d | Product Owner; SCRUM Master; SCRUM T Consultant 1; SCRUM T Consultant 2 | 448h | 13,250 |
| 116 | 6.1.2 | Project Requirements Review |  | 14d | 2022-09-06 | 2022-09-23 | 115 | 0d | Project Sponsor B; Project Sponsor N; Senior Internal Audit Consultant | 336h | 7,500 |
| 117 | 6.1.3 | Pilot Concluded | milestone | 0d | 2022-09-23 | 2022-09-23 | 116 | 0d |  |  |  |
